# Projeto Baggins

Schedule from MS Project, 2013-07-22 to 2014-01-02, 4 hours a day, costs in R$.

## Calendars

- Beatriz: Mon off; Tue 19:00-23:00; Wed off; Thu 19:00-23:00; Fri-Sun off. Exceptions (off unless hours are given): 2013-07-22 to 2013-07-26 21:00-24:00 (Semana de férias).

## Resources

| Resource | Rate |
| --- | --- |
| Beatriz | 9.48 |
| Guilherme | 9.48 |

## Schedule

| ID | WBS | Task | Duration | Start | Finish | Predecessors | Baseline start | Baseline finish | Baseline duration | Total slack | Free slack | Resources | Work | Cost | Baseline cost |
| --- | --- | --- | --- | --- | --- | --- | --- | --- | --- | --- | --- | --- | --- | --- | --- |
| 1 | 1 | **Planejamento** | 3.25d | 2013-07-22 | 2013-07-26 |  | 2013-07-22 | 2013-07-25 | 3.25d | -9d | 0d |  | 15h | 142.2 | 142.2 |
| 2 | 1.1 | **Requisitos** | 0.75d | 2013-07-22 | 2013-07-23 |  | 2013-07-22 | 2013-07-22 | 0.75d | -9d | 0d |  | 5h | 47.4 | 47.4 |
| 3 | 1.1.1 | **Requisitos Iniciais** | 0.5d | 2013-07-22 | 2013-07-22 |  | 2013-07-22 | 2013-07-22 | 0.5d | -9d | 0d |  | 2h | 18.96 | 18.96 |
| 4 | 1.1.1.1 | Coletar Requisitos | 1h | 2013-07-22 | 2013-07-22 |  | 2013-07-22 | 2013-07-22 | 1h | -9d | 0d | Beatriz | 1h | 9.48 | 9.48 |
| 5 | 1.1.1.2 | Escrever requisitos | 1h | 2013-07-22 | 2013-07-22 | 4 | 2013-07-22 | 2013-07-22 | 1h | -9d | 0d | Beatriz | 1h | 9.48 | 9.48 |
| 6 | 1.1.2 | **Refinar Requisitos** | 0.75d | 2013-07-22 | 2013-07-23 |  | 2013-07-22 | 2013-07-22 | 0.75d | -9d | 0d |  | 3h | 28.44 | 28.44 |
| 7 | 1.1.2.1 | Reescrever requisitos | 1h | 2013-07-22 | 2013-07-22 |  | 2013-07-22 | 2013-07-22 | 1h | -8.75d | 0d | Guilherme | 1h | 9.48 | 9.48 |
| 8 | 1.1.2.2 | Aprovação Cliente | 1h | 2013-07-22 | 2013-07-23 | 5 | 2013-07-22 | 2013-07-22 | 1h | -9d | 0d | Beatriz | 1h | 9.48 | 9.48 |
| 9 | 1.1.2.3 | Reescrever requisitos | 1h | 2013-07-22 | 2013-07-22 | 7 | 2013-07-22 | 2013-07-22 | 1h | -8.75d | 0d | Guilherme | 1h | 9.48 | 9.48 |
| 10 | 1.2 | **Protótipos** | 1.5d | 2013-07-23 | 2013-07-25 | 2 | 2013-07-22 | 2013-07-24 | 1.5d | -9d | 0d |  | 6h | 56.88 | 56.88 |
| 11 | 1.2.1 | **Elaborar Protótipos** | 0.75d | 2013-07-23 | 2013-07-24 |  | 2013-07-22 | 2013-07-23 | 0.75d | -9d | 0d |  | 3h | 28.44 | 28.44 |
| 12 | 1.2.1.1 | Criar Protótipos | 1h | 2013-07-23 | 2013-07-23 | 9 | 2013-07-22 | 2013-07-23 | 1h | -9d | 0d | Guilherme | 1h | 9.48 | 9.48 |
| 13 | 1.2.1.2 | Aprovação Inicial | 1h | 2013-07-23 | 2013-07-23 | 12 | 2013-07-23 | 2013-07-23 | 1h | -9d | 0d | Beatriz | 1h | 9.48 | 9.48 |
| 14 | 1.2.1.3 | Reestruturar Protótipos | 1h | 2013-07-23 | 2013-07-24 | 13 | 2013-07-23 | 2013-07-23 | 1h | -9d | 0d | Guilherme | 1h | 9.48 | 9.48 |
| 15 | 1.2.2 | **Revisar Protótipos** | 0.75d | 2013-07-24 | 2013-07-25 |  | 2013-07-23 | 2013-07-24 | 0.75d | -9d | 0d |  | 3h | 28.44 | 28.44 |
| 16 | 1.2.2.1 | Aprovação com Cliente | 1h | 2013-07-24 | 2013-07-24 | 14 | 2013-07-23 | 2013-07-23 | 1h | -9d | 0d | Beatriz | 1h | 9.48 | 9.48 |
| 17 | 1.2.2.2 | Reestruturar Protótipos | 1h | 2013-07-24 | 2013-07-24 | 16 | 2013-07-23 | 2013-07-24 | 1h | -9d | 0d | Guilherme | 1h | 9.48 | 9.48 |
| 18 | 1.2.2.3 | Reestruturar Requisitos | 1h | 2013-07-24 | 2013-07-25 | 17 | 2013-07-24 | 2013-07-24 | 1h | -9d | 0d | Guilherme | 1h | 9.48 | 9.48 |
| 19 | 1.3 | **Caso de uso** | 1d | 2013-07-25 | 2013-07-26 | 10 | 2013-07-24 | 2013-07-25 | 1d | -9d | 0d |  | 4h | 37.92 | 37.92 |
| 20 | 1.3.1 | Elaborar Casos de Uso | 1h | 2013-07-25 | 2013-07-25 |  | 2013-07-24 | 2013-07-24 | 1h | -9d | 0d | Guilherme | 1h | 9.48 | 9.48 |
| 21 | 1.3.2 | Revisar Casos elaborados | 1h | 2013-07-25 | 2013-07-25 | 20 | 2013-07-24 | 2013-07-24 | 1h | -9d | 0d | Guilherme | 1h | 9.48 | 9.48 |
| 22 | 1.3.3 | Aprovar Casos de Usos | 2h | 2013-07-25 | 2013-07-26 | 21 | 2013-07-24 | 2013-07-25 | 2h | -9d | 0d | Beatriz | 2h | 18.96 | 18.96 |
| 23 | 2 | **Construção** | 36d? | 2013-07-26 | 2013-11-28 | 1 | 2013-07-25 | 2013-10-31 | 28d? | -9d | 0d |  | 92h | 872.16 | 910.08 |
| 24 | 2.1 | **Iteração I** | 18d? | 2013-07-26 | 2013-09-26 |  | 2013-07-25 | 2013-10-17 | 24d? | -9d | 0d |  | 44h | 417.12 | 910.08 |
| 25 | 2.1.1 | **UC- Componente Tabela Dinâmica** | 4d | 2013-07-26 | 2013-08-08 |  | 2013-07-25 | 2013-08-20 | 8d? | -9d | 0d |  | 16h | 151.68 | 303.36 |
| 26 | 2.1.1.1 | Pesquisas JSF Sem XHTML e ERROS | 16h | 2013-07-26 | 2013-08-08 | 27FF | 2013-07-25 | 2013-08-20 | 8d | -9d | 0d | Guilherme [50%] | 8h | 75.84 | 151.68 |
| 27 | 2.1.1.2 | Implementar Caso de Uso | 16h | 2013-07-26 | 2013-08-08 |  | 2013-07-25 | 2013-08-20 | 8d? | -9d | 0d | Guilherme [50%] | 8h | 75.84 | 151.68 |

| ID | WBS | Task | Duration | Start | Finish | Predecessors | Baseline start | Baseline finish | Baseline duration | Total slack | Free slack | Resources | Work | Cost | Baseline cost |
| --- | --- | --- | --- | --- | --- | --- | --- | --- | --- | --- | --- | --- | --- | --- | --- |
| 28 | 2.1.2 | **UC- Manter Ambientes** | 1d? | 2013-08-08 | 2013-08-13 | 25 | 2013-08-20 | 2013-08-27 | 2d? | -9d | 0d |  | 4h | 37.92 | 75.84 |
| 29 | 2.1.2.1 | Implementar Caso de Uso | 4h? | 2013-08-08 | 2013-08-13 |  | 2013-08-20 | 2013-08-27 | 2d? | -9d | 0d | Guilherme [50%] | 2h | 18.96 | 37.92 |
| 30 | 2.1.2.2 | Pesquisas JSF Sem XHTML e ERROS | 4h? | 2013-08-08 | 2013-08-13 | 29FF | 2013-08-20 | 2013-08-27 | 2d? | -9d | 0d | Guilherme [50%] | 2h | 18.96 | 37.92 |
| 31 | 2.1.3 | **UC- Manter Fornecedores** | 1d? | 2013-08-13 | 2013-08-15 | 28 | 2013-08-27 | 2013-09-03 | 2d? | -9d | 0d |  | 4h | 37.92 | 75.84 |
| 32 | 2.1.3.1 | Implementar Caso de Uso | 4h? | 2013-08-13 | 2013-08-15 |  | 2013-08-27 | 2013-09-03 | 2d? | -9d | 0d | Guilherme [50%] | 2h | 18.96 | 37.92 |
| 33 | 2.1.3.2 | Pesquisas JSF Sem XHTML e ERROS | 4h? | 2013-08-13 | 2013-08-15 | 32FF | 2013-08-27 | 2013-09-03 | 2d? | -9d | 0d | Guilherme [50%] | 2h | 18.96 | 37.92 |
| 34 | 2.1.4 | **UC-Manter Manutenção** | 1d? | 2013-08-15 | 2013-08-20 | 31 | 2013-09-03 | 2013-09-10 | 2d? | -9d | 0d |  | 4h | 37.92 | 75.84 |
| 35 | 2.1.4.1 | Implementar Caso de Uso | 4h? | 2013-08-15 | 2013-08-20 |  | 2013-09-03 | 2013-09-10 | 2d? | -9d | 0d | Guilherme [50%] | 2h | 18.96 | 37.92 |
| 36 | 2.1.4.2 | Pesquisas JSF Sem XHTML e ERROS | 4h? | 2013-08-15 | 2013-08-20 | 35FF | 2013-09-03 | 2013-09-10 | 2d? | -9d | 0d | Guilherme [50%] | 2h | 18.96 | 37.92 |
| 37 | 2.1.5 | **UC-Manter Marcas** | 1d? | 2013-08-20 | 2013-08-22 | 34 | 2013-09-10 | 2013-09-17 | 2d? | -9d | 0d |  | 4h | 37.92 | 75.84 |
| 38 | 2.1.5.1 | Implementar Caso de Uso | 4h? | 2013-08-20 | 2013-08-22 |  | 2013-09-10 | 2013-09-17 | 2d? | -9d | 0d | Guilherme [50%] | 2h | 18.96 | 37.92 |
| 39 | 2.1.5.2 | Pesquisas JSF Sem XHTML e ERROS | 4h? | 2013-08-20 | 2013-08-22 | 38FF | 2013-09-10 | 2013-09-17 | 2d? | -9d | 0d | Guilherme [50%] | 2h | 18.96 | 37.92 |
| 40 | 2.1.6 | **UC-Manter Modelos** | 1d | 2013-08-22 | 2013-08-27 | 37 | 2013-09-17 | 2013-09-24 | 2d? | -9d | 0d |  |  |  | 75.84 |
| 41 | 2.1.6.1 | Implementar Caso de Uso | 4h | 2013-08-22 | 2013-08-27 |  | 2013-09-17 | 2013-09-24 | 2d? | -9d | 0d |  |  |  | 37.92 |
| 42 | 2.1.6.2 | Pesquisas JSF Sem XHTML e ERROS | 4h | 2013-08-22 | 2013-08-27 | 41FF | 2013-09-17 | 2013-09-24 | 2d? | -9d | 0d |  |  |  | 37.92 |
| 43 | 2.1.7 | **UC-Manter Setor de Atividade** | 1d? | 2013-08-27 | 2013-08-29 | 40 | 2013-09-24 | 2013-10-03 | 2d? | -9d | 0d |  | 4h | 37.92 | 75.84 |
| 44 | 2.1.7.1 | Implementar Caso de Uso | 4h? | 2013-08-27 | 2013-08-29 |  | 2013-09-24 | 2013-10-03 | 2d? | -9d | 0d | Guilherme [50%] | 2h | 18.96 | 37.92 |
| 45 | 2.1.7.2 | Pesquisas JSF Sem XHTML e ERROS | 4h? | 2013-08-27 | 2013-08-29 | 44FF | 2013-09-24 | 2013-10-03 | 2d? | -9d | 0d | Guilherme [50%] | 2h | 18.96 | 37.92 |
| 46 | 2.1.8 | **UC -Manter Tipo de Material** | 1d? | 2013-08-29 | 2013-09-03 | 43 | 2013-10-03 | 2013-10-10 | 2d? | -9d | 0d |  | 4h | 37.92 | 75.84 |
| 47 | 2.1.8.1 | Implementar Caso de Uso | 4h? | 2013-08-29 | 2013-09-03 |  | 2013-10-03 | 2013-10-10 | 2d? | -9d | 0d | Guilherme [50%] | 2h | 18.96 | 37.92 |
| 48 | 2.1.8.2 | Pesquisas JSF Sem XHTML e ERROS | 4h? | 2013-08-29 | 2013-09-03 | 47FF | 2013-10-03 | 2013-10-10 | 2d? | -9d | 0d | Guilherme [50%] | 2h | 18.96 | 37.92 |
| 49 | 2.1.9 | **UC-Manter Usuarios** | 1d? | 2013-09-03 | 2013-09-05 | 46 | 2013-10-10 | 2013-10-17 | 2d? | -9d | 0d |  | 4h | 37.92 | 75.84 |
| 50 | 2.1.9.1 | Implementar Caso de Uso | 4h? | 2013-09-03 | 2013-09-05 |  | 2013-10-10 | 2013-10-17 | 2d? | -9d | 0d | Guilherme [50%] | 2h | 18.96 | 37.92 |
| 51 | 2.1.9.2 | Pesquisas JSF Sem XHTML e ERROS | 4h? | 2013-09-03 | 2013-09-05 | 50FF | 2013-10-10 | 2013-10-17 | 2d? | -9d | 0d | Guilherme [50%] | 2h | 18.96 | 37.92 |

| ID | WBS | Task | Duration | Start | Finish | Predecessors | Baseline start | Baseline finish | Baseline duration | Total slack | Free slack | Resources | Work | Cost | Baseline cost |
| --- | --- | --- | --- | --- | --- | --- | --- | --- | --- | --- | --- | --- | --- | --- | --- |
| 52 | 2.1.10 | **Teste da Iteração** | 6d? | 2013-09-05 | 2013-09-26 | 49 |  |  |  | -9d | 0d |  |  |  |  |
| 53 | 2.1.10.1 | Inicio do teste | 2d | 2013-09-05 | 2013-09-12 |  |  |  |  | -9d | 0d |  |  |  |  |
| 54 | 2.1.10.2 | Correções do teste | 2d | 2013-09-12 | 2013-09-19 | 53 |  |  |  | -9d | 0d |  |  |  |  |
| 55 | 2.1.10.3 | Re-Teste | 1d? | 2013-09-19 | 2013-09-24 | 54 |  |  |  | -9d | 0d |  |  |  |  |
| 56 | 2.1.10.4 | Correções do re-teste | 1d? | 2013-09-24 | 2013-09-26 | 55 |  |  |  | -9d | 0d |  |  |  |  |
| 57 | 2.2 | **Iteração II** | 18d? | 2013-09-26 | 2013-11-28 | 24 | 2013-10-17 | 2013-10-24 | 2d? | -9d | 0d |  | 48h | 455.04 |  |
| 58 | 2.2.1 | **UC- Emprestimo** | 3d? | 2013-09-26 | 2013-10-08 |  |  |  |  | -9d | 0d |  | 12h | 113.76 |  |
| 59 | 2.2.1.1 | Implementar Caso de Uso | 12h? | 2013-09-26 | 2013-10-08 |  | 2013-10-10 | 2013-10-17 | 2d? | -9d | 0d | Guilherme [50%] | 6h | 56.88 | 37.92 |
| 60 | 2.2.1.2 | Pesquisas JSF e ERROS | 12h? | 2013-09-26 | 2013-10-08 | 59FF | 2013-10-10 | 2013-10-17 | 2d? | -9d | 0d | Guilherme [50%] | 6h | 56.88 | 37.92 |
| 61 | 2.2.2 | **UC- Devolução** | 3d? | 2013-10-08 | 2013-10-17 | 58 |  |  |  | -9d | 0d |  | 12h | 113.76 |  |
| 62 | 2.2.2.1 | Implementar Caso de Uso | 12h? | 2013-10-08 | 2013-10-17 |  | 2013-10-10 | 2013-10-17 | 2d? | -9d | 0d | Guilherme [50%] | 6h | 56.88 | 37.92 |
| 63 | 2.2.2.2 | Pesquisas JSF e ERROS | 12h? | 2013-10-08 | 2013-10-17 | 62FF | 2013-10-10 | 2013-10-17 | 2d? | -9d | 0d | Guilherme [50%] | 6h | 56.88 | 37.92 |
| 64 | 2.2.3 | **UC- Envio de E-mail** | 4d? | 2013-10-17 | 2013-10-31 | 61 |  |  |  | -9d | 0d |  | 16h | 151.68 |  |
| 65 | 2.2.3.1 | Implementar Caso de Uso | 16h? | 2013-10-17 | 2013-10-31 |  | 2013-10-10 | 2013-10-17 | 2d? | -9d | 0d | Guilherme [50%] | 8h | 75.84 | 37.92 |
| 66 | 2.2.3.2 | Pesquisas JSF e ERROS | 16h? | 2013-10-17 | 2013-10-31 | 65FF | 2013-10-10 | 2013-10-17 | 2d? | -9d | 0d | Guilherme [50%] | 8h | 75.84 | 37.92 |
| 67 | 2.2.4 | **UC- Configurações gerais** | 2d? | 2013-10-31 | 2013-11-07 | 64 |  |  |  | -9d | 0d |  | 8h | 75.84 |  |
| 68 | 2.2.4.1 | Implementar Caso de Uso | 8h? | 2013-10-31 | 2013-11-07 |  | 2013-10-10 | 2013-10-17 | 2d? | -9d | 0d | Guilherme [50%] | 4h | 37.92 | 37.92 |
| 69 | 2.2.4.2 | Pesquisas JSF e ERROS | 8h? | 2013-10-31 | 2013-11-07 | 68FF | 2013-10-10 | 2013-10-17 | 2d? | -9d | 0d | Guilherme [50%] | 4h | 37.92 | 37.92 |
| 70 | 2.2.5 | **Teste da Iteração** | 6d? | 2013-11-07 | 2013-11-28 | 67 |  |  |  | -9d | 0d |  |  |  |  |
| 71 | 2.2.5.1 | Inicio do teste | 2d | 2013-11-07 | 2013-11-14 |  |  |  |  | -9d | 0d |  |  |  |  |
| 72 | 2.2.5.2 | Correções do teste | 2d | 2013-11-14 | 2013-11-21 | 71 |  |  |  | -9d | 0d |  |  |  |  |
| 73 | 2.2.5.3 | Re-Teste | 1d? | 2013-11-21 | 2013-11-26 | 72 |  |  |  | -9d | 0d |  |  |  |  |
| 74 | 2.2.5.4 | Correções do re-teste | 1d? | 2013-11-26 | 2013-11-28 | 73 |  |  |  | -9d | 0d |  |  |  |  |
| 75 | 2.3 | **Iteração III** | 10d? | 2013-10-17 | 2013-11-21 | 57 | 2013-10-24 | 2013-10-31 | 2d? |  |  |  |  |  |  |
| 76 | 2.3.1 | UC- Relatório Um | 1d? | 2013-10-17 | 2013-10-22 |  |  |  |  | 3d | 0d |  |  |  |  |

| ID | WBS | Task | Duration | Start | Finish | Predecessors | Total slack | Free slack |
| --- | --- | --- | --- | --- | --- | --- | --- | --- |
| 77 | 2.3.2 | **Teste da Iteração** | 6d? | 2013-10-22 | 2013-11-12 | 76 | 3d |  |
| 78 | 2.3.2.1 | Inicio do teste | 2d | 2013-10-22 | 2013-10-29 |  | 3d | 0d |
| 79 | 2.3.2.2 | Correções do teste | 2d | 2013-10-29 | 2013-11-05 | 78 | 3d | 0d |
| 80 | 2.3.2.3 | Re-Teste | 1d? | 2013-11-05 | 2013-11-07 | 79 | 3d | 0d |
| 81 | 2.3.2.4 | Correções do re-teste | 1d? | 2013-11-07 | 2013-11-12 | 80 | 3d |  |
| 82 | 3 | **Teste** | 9d | 2013-11-28 | 2013-12-31 | 23 | 0d |  |
| 83 | 3.1 | Teste de Regreção | 3d | 2013-11-28 | 2013-12-10 |  | 0d |  |
| 84 | 3.2 | Correção do Teste de Regreção | 2d | 2013-12-10 | 2013-12-17 | 83 | 0d |  |
| 85 | 3.3 | Re-Teste de regreção | 2d | 2013-12-17 | 2013-12-24 | 84 | 0d |  |
| 86 | 3.4 | Correção do Re-Teste de Regreção | 2d | 2013-12-24 | 2013-12-31 | 85 | 0d |  |
| 87 | 4 | **Entrega Final** | 1.5d? | 2013-12-31 | 2014-01-02 | 82 | 0d |  |
| 88 | 4.1 | Fechar Última Versão do Projeto | 2h | 2013-12-31 | 2013-12-31 |  | 0d |  |
| 89 | 4.2 | Realizar a Implementação | 1d? | 2014-01-02 | 2014-01-02 | 88 | 0d |  |
